# Proyecto System Center Service Manager

How a schedule from MS Project changed from version to version. A marks actual dates.

## Version 1 (data date 2016-07-13, saved 2016-07-15)

Note of the change: a

| ID | WBS | Task | Duration | Start | Finish | Predecessors | Complete | Constraint |
| --- | --- | --- | --- | --- | --- | --- | --- | --- |
| 1 | 1 | **IDMA SOFT** | 330d | 2015-04-12 | 2016-07-20 |  | 100% |  |
| 2 | 1.1 | **Estudio Preliminar** | 20d | 2015-04-12 | 2015-05-07 |  | 100% |  |
| 3 |  | Instalación de servidor | 10h | 2016-04-12 A | 2016-04-13 A |  | 100% |  |
| 4 |  | Instalación de Pre-requisitos | 2h | 2016-04-13 A | 2016-04-13 A | 3 | 100% |  |
| 5 |  | Configurar servidor de SQL | 4h | 2016-04-13 A | 2016-04-13 A | 4 | 100% |  |
| 6 |  | Instalación de Service Manager Management Server | 12h | 2016-04-14 A | 2016-04-15 A | 5 | 100% |  |
| 7 |  | Generación de backup para la llave de seguridad del sitio | 2h | 2016-04-15 A | 2016-04-15 A | 6 | 100% |  |
| 8 |  | Configuraciones generales | 8h | 2016-04-15 A | 2016-04-18 A | 7 | 100% |  |
| 9 | 1.2 | **Relevamiento** | 30d | 2015-06-18 | 2015-07-29 |  | 100% |  |
| 10 |  | Instalación de servidor | 10h | 2016-04-18 A | 2016-04-19 A |  | 100% |  |
| 11 |  | Instalacion de Pre-requisitos | 2h | 2016-04-20 A | 2016-04-20 A | 10 | 100% |  |
| 12 |  | Configurar servidor de SQL | 8h | 2016-04-20 A | 2016-04-21 A | 11 | 100% |  |
| 13 |  | Instalación de Service Manager data warehouse management server | 12h | 2016-04-21 A | 2016-04-22 A | 12 | 100% |  |
| 14 |  | Generación de backup para la llave de seguridad del sitio | 2h | 2016-04-22 A | 2016-04-22 A | 13 | 100% |  |
| 15 |  | Verificación de la instalación del System Center Service | 5h | 2016-04-25 A | 2016-04-25 A | 14 | 100% |  |
| 16 |  | Registración del Service Manager Data Warehouse | 4h | 2016-04-25 A | 2016-04-26 A | 15 | 100% |  |
| 17 |  | Configuraciones generales | 12h | 2016-04-26 A | 2016-04-27 A | 16 | 100% |  |
| 18 | 1.3 | **Diseño** | 60d | 2015-07-31 | 2015-10-22 |  | 100% |  |
| 19 |  | Instalación de servidor | 10h | 2016-04-27 A | 2016-04-28 A |  | 100% |  |
| 20 |  | Instalacion de Pre-requisitos | 2.5h | 2016-04-28 A | 2016-04-29 A | 19 | 100% |  |
| 21 |  | Instalación de Sharepoint 2010 Foundation | 8h | 2016-04-29 A | 2016-05-02 A | 20 | 100% |  |
| 22 |  | Despliegue de portal | 12h | 2016-05-02 A | 2016-05-03 A | 21 | 100% |  |
| 23 |  | Configuraciones generales | 8h | 2016-05-03 A | 2016-09-19 A | 22 | 100% |  |
| 24 | 1.4 | **Ambiente** | 10d | 2015-10-23 | 2015-11-05 |  | 100% |  |
| 25 |  | Relevamiento de metodología de trabajo actual | 60h | 2016-05-04 A | 2016-07-21 A |  | 100% |  |
| 26 |  | Administración de herramienta | 12h | 2016-07-21 A | 2016-07-25 A | 25 | 100% | start no earlier than 2016-07-13 |
| 27 |  | Ajustes de operación diaria | 38h | 2016-05-17 A | 2016-07-29 A | 26 | 100% |  |
| 28 |  | Configuración de roles de usuarios | 8h | 2016-07-29 A | 2016-08-01 A | 27 | 100% | start no earlier than 2016-07-13 |
| 29 |  | Configuración de informes | 8h | 2016-08-01 A | 2016-08-02 A | 28 | 100% | start no earlier than 2016-07-13 |
| 30 |  | Pruebas | 40h | 2016-05-26 A | 2016-08-05 A |  | 100% |  |
| 31 |  | Implementación | 40h | 2016-05-26 A | 2016-08-05 A |  | 100% |  |

## Version 2 (data date 2016-07-13, saved 2016-07-16)

Note of the change: a

Last finish stays 2016-09-19. Complete tasks 26 → 27.

Added:

| ID | Task | Duration | Start | Finish |
| --- | --- | --- | --- | --- |
| 30 | Construcción | 168d | 2015-11-06 A | 2016-07-01 A |

Changed:

| ID | Task | Start | Finish | Duration |
| --- | --- | --- | --- | --- |
| 9 | **Relevamiento** | 2015-06-18 → 2015-05-08 (-41d) | 2015-07-29 → 2015-06-18 (-41d) |  |
| 18 | **Ambiente** | 2015-10-23 → 2015-07-31 (-84d) | 2015-11-05 → 2015-10-22 (-14d) | 10d → 60d |
| 24 | **Diseño** | 2015-07-31 → 2015-10-23 (+84d) | 2015-10-22 → 2015-11-05 (+14d) | 60d → 10d |
| 31 | Pruebas | 2016-05-26 A → 2016-07-02 A (+37d) | 2016-08-05 A → 2016-07-07 A (-29d) | 40h → 12h |
| 32 | Implementación | 2016-05-26 A → 2016-07-09 A (+44d) | 2016-08-05 A → 2016-07-11 A (-25d) | 40h → 8h |
